| slug | name | description | methodology | start_date | calendar | default_view | labels | dependencies | baselines | risks | wbs_path | delivery_mode | status | assignee | percent_complete | duration | planned_start | estimate | is_milestone | links |
| --- | --- | --- | --- | --- | --- | --- | --- | --- | --- | --- | --- | --- | --- | --- | --- | --- | --- | --- | --- | --- |
| bayside-sitework | Sitework & Structure | The below-grade and structural scope — site prep, foundation, and framing up to a topped-out structure. | WATERFALL | A-90 | site | SCHEDULE | critical-path Critical path rose 0, inspection Inspection gate amber 1, weather Weather-sensitive cyan 2, change-order Change order purple 3 | 1.1 1.2 FS 0, 1.1 1.3 SS 0, 1.2 1.4 FS 0, 1.3 1.4 FS 0, 1.4 2.1 FS 0, 2.1 2.2 FS 0, 2.2 2.3 FS 0, 2.2 2.4 SS 0, 2.3 2.5 FS 7, 2.4 2.5 FF 0, 2.5 3.1 FS 0, 3.1 3.2 FS 0, 3.1 3.3 FS 0, 3.2 3.4 FF 0, 3.3 3.4 FF 0, 3.4 4 FS 0 | Contract baseline  A-88 1.1 A-90 A-86 4, 1.2 A-82 A-76 6, 1.3 A-70 A-67 3, 1.4 A-64 A-62 2, 2.1 A-60 A-55 5, 2.2 A-50 A-44 6, 2.3 A-38 A-35 3, 2.4 A-32 A-29 3, 2.5 A-26 A-22 4, 3.1 A-18 A-10 8, 3.2 A-2 A+4 6, 3.3 A+10 A+17 7, 3.4 A+24 A+26 2, Rebaseline — mezzanine change order True A-13 1.1 A-90 A-86 4, 1.2 A-82 A-76 6, 1.3 A-70 A-67 3, 1.4 A-64 A-62 2, 2.1 A-60 A-55 5, 2.2 A-50 A-44 6, 2.3 A-38 A-35 3, 2.4 A-32 A-29 3, 2.5 A-26 A-22 4, 3.1 A-18 A-10 8, 3.2 A+5 A+13 8, 3.3 A+17 A+24 7, 3.4 A+31 A+33 2 | weather Weather delays outdoor phases OPEN 4 3 EXTERNAL MITIGATE sam 2.3, 2.4, soil-conditions Unexpected soil conditions at excavation OPEN 2 4 TECHNICAL ACCEPT tom Geotech survey confirmed bearing capacity; no remediation needed. 2.1, permit-delay Building permit approval slips The municipal permit office is running 3 weeks behind; gates site prep sign-off. OPEN 3 5 EXTERNAL MITIGATE sam 1.4, labor Concrete crew availability OPEN 3 3 ORGANIZATIONAL MITIGATE tom 2.3, design-change Owner-requested design change order OPEN 3 4 PROJECT_MANAGEMENT MITIGATE diego 3.1, crane-availability Tower crane scheduling conflict OPEN 2 3 ORGANIZATIONAL MITIGATE tom Crane window booked and confirmed for the structural phase. 3.3, material-escalation Steel & concrete price escalation ACCEPTED 4 3 EXTERNAL ACCEPT omar 3.2 |  |  |  |  |  |  |  |  |  |  |
|  | · Site Prep |  |  |  |  |  |  |  |  |  | 1 | waterfall |  |  |  |  |  |  |  |  |
|  | · Mobilize site |  |  |  |  |  |  |  |  |  | 1.1 | waterfall | COMPLETE | nadia | 100.0 | 4 | A-90 | 3 4 8 |  |  |
|  | · Clear & grade |  |  |  |  |  | critical-path |  |  |  | 1.2 | waterfall | COMPLETE | omar | 100.0 | 6 | A-82 | 4 6 11 |  |  |
|  | · Temporary utilities |  |  |  |  |  |  |  |  |  | 1.3 | waterfall | COMPLETE | diego | 100.0 | 3 | A-70 | 2 3 6 |  |  |
|  | · Site survey sign-off |  |  |  |  |  | inspection |  |  |  | 1.4 | waterfall | COMPLETE | tom | 100.0 | 2 | A-64 | 1 2 4 |  |  |
|  | · Foundation |  |  |  |  |  |  |  |  |  | 2 | waterfall |  |  |  |  |  |  |  |  |
|  | · Excavate footings |  |  |  |  |  | critical-path |  |  |  | 2.1 | waterfall | COMPLETE | omar | 100.0 | 5 | A-60 | 4 5 10 |  |  |
|  | · Rebar & formwork |  |  |  |  |  | critical-path, inspection |  |  |  | 2.2 | waterfall | COMPLETE | diego | 100.0 | 6 | A-50 | 4 6 11 |  |  |
|  | · Pour east footing |  |  |  |  |  | weather |  |  |  | 2.3 | waterfall | COMPLETE | tom | 100.0 | 3 | A-38 | 2 3 6 |  |  |
|  | · Pour west footing |  |  |  |  |  | weather |  |  |  | 2.4 | waterfall | COMPLETE | nadia | 100.0 | 3 | A-32 | 2 3 6 |  |  |
|  | · Cure & strip forms |  |  |  |  |  | critical-path |  |  |  | 2.5 | waterfall | COMPLETE | omar | 100.0 | 4 | A-26 | 3 4 8 |  |  |
|  | · Framing |  |  |  |  |  |  |  |  |  | 3 | waterfall |  |  |  |  |  |  |  |  |
|  | · Steel erection |  |  |  |  |  | critical-path |  |  |  | 3.1 | waterfall | IN_PROGRESS | diego | 55.0 | 8 | A-18 | 6 8 15 |  |  |
|  | · Floor decking |  |  |  |  |  | change-order |  |  |  | 3.2 | waterfall | NOT_STARTED | tom |  | 8 | A+5 | 6 8 15 |  |  |
|  | · Roof structure |  |  |  |  |  | weather |  |  |  | 3.3 | waterfall | NOT_STARTED | nadia |  | 7 | A+19 | 5 7 13 |  |  |
|  | · Framing inspection |  |  |  |  |  | critical-path, inspection |  |  |  | 3.4 | waterfall | NOT_STARTED | omar |  | 2 | A+33 | 1 2 4 |  |  |
|  | · Structure topped out |  |  |  |  |  | critical-path |  |  |  | 4 | milestone |  |  |  |  | A+37 |  | True |  |
| bayside-building | Building & Fit-out | The interior scope — MEP rough-in, finishes, and commissioning through to a certificate of occupancy. Every task is gated on the structure passing framing inspection. | WATERFALL | A-90 | site | SCHEDULE | critical-path Critical path rose 0, long-lead Long-lead procurement amber 1, inspection Inspection gate teal 2, commissioning Commissioning green 3 | bayside-sitework:3.4 1.1 FS -3, bayside-sitework:3.4 1.2 FS 0, bayside-sitework:3.4 1.3 FS 0, 1.1 1.5 FS 0, 1.2 1.5 FS 0, 1.3 1.5 FS 0, 1.5 2.1 FS 0, 2.1 2.2 FS 0, 2.1 2.3 FS 0, 2.2 2.4 SF 0, 2.2 2.5 FS 0, 2.3 2.5 FS 0, 2.5 3 FS 0, 2.4 3 FS 0 | Contract baseline True A-88 1.1 A+28 A+35 7, 1.2 A+42 A+48 6, 1.3 A+54 A+62 8, 1.4 A+70 A+75 5, 1.5 A+80 A+83 3, 2.1 A+86 A+94 8, 2.2 A+102 A+108 6, 2.3 A+114 A+119 5, 2.5 A+126 A+129 3 | supply-chain MEP equipment supply delay MITIGATING 3 5 EXTERNAL MITIGATE nadia 1.4, electrical-inspection Electrical rough-in inspection rework MITIGATING 3 3 TECHNICAL MITIGATE nadia 1.5, subcontractor-default MEP subcontractor financial risk Primary MEP sub is over-extended; default would strand the rough-in. OPEN 2 5 EXTERNAL TRANSFER sam 1.4, commissioning-delay Building-systems commissioning slips occupancy OPEN 3 4 TECHNICAL MITIGATE diego 2.4 |  |  |  |  |  |  |  |  |  |  |
|  | · MEP |  |  |  |  |  |  |  |  |  | 1 | waterfall |  |  |  |  |  |  |  |  |
|  | · Rough-in electrical |  |  |  |  |  | critical-path |  |  |  | 1.1 | waterfall | NOT_STARTED | nadia |  | 7 | A+37 | 5 7 13 |  | bayside-sitework:3.4 relates_to Electrical rough-in mobilizes three days ahead of this framing inspection — see the structural gate for the cert date. |
|  | · Rough-in plumbing |  |  |  |  |  |  |  |  |  | 1.2 | waterfall | NOT_STARTED | omar |  | 6 | A+51 | 4 6 11 |  |  |
|  | · HVAC ductwork |  |  |  |  |  |  |  |  |  | 1.3 | waterfall | NOT_STARTED | diego |  | 8 | A+63 | 6 8 15 |  |  |
|  | · MEP equipment delivery |  |  |  |  |  | long-lead |  |  |  | 1.4 | waterfall | NOT_STARTED | tom |  | 5 | A+79 | 4 5 10 |  |  |
|  | · MEP inspection |  |  |  |  |  | inspection |  |  |  | 1.5 | waterfall | NOT_STARTED | nadia |  | 3 | A+89 | 2 3 6 |  | 2.5 duplicates If the AHJ allows a combined walk, the standalone MEP inspection folds into final handover — dedupe before scheduling. |
|  | · Finish-out |  |  |  |  |  |  |  |  |  | 2 | waterfall |  |  |  |  |  |  |  |  |
|  | · Drywall & paint |  |  |  |  |  | critical-path |  |  |  | 2.1 | waterfall | NOT_STARTED | omar |  | 8 | A+95 | 6 8 15 |  |  |
|  | · Flooring |  |  |  |  |  |  |  |  |  | 2.2 | waterfall | NOT_STARTED | diego |  | 6 | A+111 | 4 6 11 |  |  |
|  | · Fixtures & casework |  |  |  |  |  |  |  |  |  | 2.3 | waterfall | NOT_STARTED | tom |  | 5 | A+123 | 4 5 10 |  |  |
|  | · Commissioning start |  |  |  |  |  | commissioning |  |  |  | 2.4 | milestone | NOT_STARTED | nadia |  |  | A+133 |  | True |  |
|  | · Final inspection & handover |  |  |  |  |  | critical-path, inspection |  |  |  | 2.5 | waterfall | NOT_STARTED | omar |  | 3 | A+135 | 2 3 6 |  |  |
|  | · Certificate of occupancy |  |  |  |  |  | critical-path |  |  |  | 3 | milestone |  |  |  |  | A+141 |  | True |  |
